gantt
    title Agente 1 Extension Bot - cronograma semanal S2 2026 (18 ago - 30 nov)
    dateFormat  YYYY-MM-DD
    axisFormat  %d %b
    tickInterval 1week
    weekday monday
    todayMarker stroke-width:2px,stroke:#0f766e,opacity:0.6

    section Sprint 0 - Infra y robustecimiento (18-31 ago)
    Dockerfile y compose para FastAPI, Postgres, Redis y worker :s0a, 2026-08-18, 2026-08-22
    Esquema PostgreSQL y migracion de la persistencia          :s0b, 2026-08-19, 2026-08-26
    Cola Celery y Redis para generacion asincrona              :s0c, 2026-08-24, 2026-08-28
    Capa de secretos y logging con correlation ID              :s0d, 2026-08-24, 2026-08-29
    Refinar prompts de gacetillas y posts con feedback real    :s0e, 2026-08-18, 2026-08-31
    Base S2 lista y entorno reproducible                       :milestone, m0, 2026-08-31, 0d

    section Sprint 1 - HU-012 Confirmaciones (1-14 sep)
    Modelar datos y endpoint de confirmacion                   :s1a, 2026-09-01, 2026-09-04
    Logica de deduplicacion con clave unica en base            :s1b, 2026-09-03, 2026-09-07
    Plantilla de email y envio via Google Workspace            :s1c, 2026-09-05, 2026-09-10
    Tarea Celery de envio y registro en base                   :s1d, 2026-09-08, 2026-09-11
    Probar duplicados, destinatario invalido y payload         :s1e, 2026-09-10, 2026-09-13
    Validar confirmaciones con la SEU                          :s1f, 2026-09-12, 2026-09-14
    HU-012 operativa con DoD                                   :milestone, m1, 2026-09-14, 0d

    section Sprint 2 - HU-013 Lenguaje natural interno (15-28 sep)
    Chat interno con autenticacion de personal SEU             :s2a, 2026-09-15, 2026-09-19
    Nodo LangGraph de interpretacion con LLM local             :s2b, 2026-09-17, 2026-09-23
    Fallback fuera de alcance sin inventar respuestas          :s2c, 2026-09-21, 2026-09-25
    Persistir transcript y trazabilidad de la conversacion     :s2d, 2026-09-22, 2026-09-26
    Probar solicitudes validas, fuera de alcance y usabilidad  :s2e, 2026-09-24, 2026-09-28
    HU-013 operativa con DoD                                   :milestone, m2, 2026-09-28, 0d

    section Sprint 3 - HU-014 Certificados parte 1 (29 sep - 12 oct)
    Plantilla de certificado y maquina de estados HITL         :s3a, 2026-09-29, 2026-10-03
    Generacion de PDF con datos academicos                     :s3b, 2026-10-01, 2026-10-07
    Bloqueo de emision sin aprobacion humana previa            :s3c, 2026-10-06, 2026-10-10
    Cola de aprobacion para el validador                       :s3d, 2026-10-08, 2026-10-12
    Certificado generable en borrador controlado              :milestone, m3, 2026-10-12, 0d

    section Sprint 4 - HU-014 cierre e integracion (13-26 oct)
    Probar datos faltantes, rechazo y emision controlada       :s4a, 2026-10-13, 2026-10-17
    Registro de emision, logs y evidencia                      :s4b, 2026-10-15, 2026-10-20
    Definir contratos y mocks con A2-A5 sin orquestar          :s4c, 2026-10-19, 2026-10-26
    HU-014 operativa con DoD                                   :milestone, m4, 2026-10-26, 0d

    section Sprint 5 - Integracion y pruebas de sistema (27 oct - 9 nov)
    Integrar insumos disponibles de A2-A5 progresivo           :s5a, 2026-10-27, 2026-11-03
    Pruebas unitarias y de integracion                         :s5b, 2026-10-27, 2026-11-04
    Pruebas E2E de extremo a extremo                           :s5c, 2026-11-02, 2026-11-06
    Probar seguridad, permisos y prompt injection              :s5d, 2026-11-04, 2026-11-09
    Suite de pruebas en verde y cobertura registrada          :milestone, m5, 2026-11-09, 0d

    section Sprint 6 - Validacion SEU y release candidata (10-23 nov)
    Validar con usuarios SEU, checklist 1-4 y trazabilidad     :s6a, 2026-11-10, 2026-11-16
    Cerrar defectos criticos detectados                        :s6b, 2026-11-13, 2026-11-18
    Ejecutar regresion completa                                :s6c, 2026-11-17, 2026-11-21
    Preparar release candidata y paquete de evidencias         :s6d, 2026-11-19, 2026-11-23
    Release candidata TRL 4 lista                              :milestone, m6, 2026-11-23, 0d

    section Cierre - Gate TRL 4 e informe de avance S2 (24-30 nov)
    Ejecutar auditoria final y decision go/no-go               :c1, 2026-11-24, 2026-11-27
    Redactar informe de avance S2 y manual operativo           :c2, 2026-11-24, 2026-11-30
    Gate TRL 4 validado y cierre del semestre                  :milestone, m7, 2026-11-30, 0d
